# WBS

Schedule from MS Project, 2011-06-09 to 2015-12-16, costs in €.

## Calendars

- Estándar: Mon-Fri 09:00-13:00, 15:00-19:00; Sat-Sun off.

## Schedule

| ID | WBS | Task | Duration | Start | Finish | Predecessors | Total slack | Free slack | Work | Cost |
| --- | --- | --- | --- | --- | --- | --- | --- | --- | --- | --- |
| 1 | 1 | **ICCI** | 1179.25d | 2011-06-09 | 2015-12-16 |  | 0d |  | 608h | 90,720 |
| 2 | 1.1 | **Planificación y gestión** | 30d | 2011-06-09 | 2011-07-20 |  | 0d |  | 600h | 90,720 |
| 3 | 1.1.1 | **Proyecto gestionado** | 30d | 2011-06-09 | 2011-07-20 |  | 0d |  | 600h | 90,720 |
| 4 | 1.1.1.1 | Realizar scope statement | 40h | 2011-06-09 | 2011-06-15 |  | 0d |  | 40h | 8,960 |
| 5 | 1.1.1.2 | Realizar WBS | 40h | 2011-06-16 | 2011-06-22 | 4 | 1169.25d |  | 40h | 5,600 |
| 6 | 1.1.1.3 | Realizar plan de gestión de riesgos | 80h | 2011-06-16 | 2011-06-29 | 4 | 1164.25d |  | 400h | 5,600 |
| 7 | 1.1.1.4 | Realizar reuniones de progreso con cliente | 40h | 2011-06-16 | 2011-06-22 | 4 | 1169.25d |  | 80h | 3,360 |
| 8 | 1.1.1.5 | Realizar reuniones de progreso internas | 200h | 2011-06-16 | 2011-07-20 | 4 | 1149.25d |  | 40h | 67,200 |
| 9 | 1.1.1.6 | Realizar gestion de tiempo | 80h | 2011-06-16 | 2011-06-29 | 4 | 1007.25d | 0d |  |  |
| 10 | 1.1.2 | **Personal contratado** | 10d | 2011-06-30 | 2011-07-13 |  | 1007.25d | 0d |  |  |
| 11 | 1.1.2.1 | Realizar entrevistas | 40h | 2011-06-30 | 2011-07-06 | 9 | 1007.25d | 0d |  |  |
| 12 | 1.1.2.2 | Contratar personal | 40h | 2011-07-07 | 2011-07-13 | 11 | 1007.25d |  |  |  |
| 13 | 1.2 | **Centros de capacitación seleccionados** | 36.88d | 2011-06-09 | 2011-07-29 |  | 0d |  |  |  |
| 14 | 1.2.1 | **Informe de especificaciones y requerimientos generales** | 2.5d | 2011-06-16 | 2011-06-20 | 4 | 0d |  |  |  |
| 15 | 1.2.1.1 | Establecer especificaciones y requerimientos generales | 7h | 2011-06-16 | 2011-06-16 |  | 0d |  |  |  |
| 16 | 1.2.1.2 | Realizar informe de especificaciones y requerimientos generales | 13h | 2011-06-16 | 2011-06-20 | 15 | 0d |  |  |  |
| 17 | 1.2.2 | **Centros de capital seleccionados** | 15.38d | 2011-06-20 | 2011-07-11 | 16 | 14d |  |  |  |
| 18 | 1.2.2.1 | Solicitar los 20 centros definidos por Gobierno | 3h | 2011-06-20 | 2011-06-20 |  | 14d | 0d |  |  |
| 19 | 1.2.2.2 | Inspeccionar centros | 120h | 2011-06-20 | 2011-07-11 | 18 | 14d |  |  |  |
| 20 | 1.2.3 | **Centros interior seleccionados** | 36.88d | 2011-06-09 | 2011-07-29 |  | 0d |  |  |  |
| 21 | 1.2.3.1 | **Localidades propuestas** | 13.12d | 2011-06-09 | 2011-06-28 |  | 0d |  |  |  |
| 22 | 1.2.3.1.1 | Solicitar al Gobierno información de colegios del interior | 20h | 2011-06-09 | 2011-06-13 |  | 5d |  |  |  |
| 23 | 1.2.3.1.2 | Analizar y seleccionar 30 localidades | 40h | 2011-06-20 | 2011-06-27 | 16, 22 | 0d |  |  |  |
| 24 | 1.2.3.1.3 | Realizar propuesta de localidades seleccionadas | 5h | 2011-06-27 | 2011-06-28 | 23 | 0d |  |  |  |

| ID | WBS | Task | Duration | Start | Finish | Predecessors | Total slack | Free slack | Work |
| --- | --- | --- | --- | --- | --- | --- | --- | --- | --- |
| 25 | 1.2.3.2 | **Centros candidatos** | 23.75d | 2011-06-28 | 2011-07-29 | 21 | 0d |  |  |
| 26 | 1.2.3.2.1 | Inspeccionar centros seleccionados | 180h | 2011-06-28 | 2011-07-28 |  | 0d |  |  |
| 27 | 1.2.3.2.2 | Notificar selección al colegio | 10h | 2011-07-28 | 2011-07-29 | 26 | 0d |  |  |
| 28 | 1.3 | **Equipamiento comprado** | 51.38d | 2011-06-09 | 2011-08-19 |  | 36.88d |  | 8h |
| 29 | 1.3.1 | **Planificación de requerimientos de compras** | 38.88d | 2011-06-09 | 2011-08-02 |  | 36.88d |  |  |
| 30 | 1.3.1.1 | **Políticas de compra establecidas** | 37.88d | 2011-06-09 | 2011-08-01 |  | 36.88d |  |  |
| 31 | 1.3.1.1.1 | **Parámetros de costo establecidos** | 1d | 2011-07-29 | 2011-08-01 | 13 | 0d |  |  |
| 32 | 1.3.1.1.1.1 | Confeccionar parametrización de costo de infraestructura | 8h | 2011-07-29 | 2011-08-01 |  | 0d |  |  |
| 33 | 1.3.1.1.1.2 | Confeccionar parametrización de costo de mobiliario | 8h | 2011-07-29 | 2011-08-01 |  | 0d |  |  |
| 34 | 1.3.1.1.2 | Parámetros de disponibilidad establecidos | 8h | 2011-06-09 | 2011-06-09 |  | 1178.25d |  |  |
| 35 | 1.3.1.1.3 | **Parámetros de cantidad establecidos** | 0.5d | 2011-07-29 | 2011-08-01 | 13 | 0.5d |  |  |
| 36 | 1.3.1.1.3.1 | Confeccionar parametrización de equipamiento informático | 4h | 2011-07-29 | 2011-08-01 |  | 0.5d |  |  |
| 37 | 1.3.1.1.3.2 | Confeccionar parametrización de mobiliario | 4h | 2011-07-29 | 2011-08-01 |  | 0.5d |  |  |
| 38 | 1.3.1.1.4 | Parámetros de garantia establecidos | 2h | 2011-06-09 | 2011-06-09 |  | 1179d |  |  |
| 39 | 1.3.1.2 | **Informes técnicos aprobados** | 1d | 2011-08-01 | 2011-08-02 | 31, 35 | 0d |  |  |
| 40 | 1.3.1.2.1 | Realizar informe de pedido de equipamiento informático | 8h | 2011-08-01 | 2011-08-02 |  | 0d |  |  |
| 41 | 1.3.1.2.2 | Realizar informe de pedido de mobiliario | 8h | 2011-08-01 | 2011-08-02 |  | 0d |  |  |
| 42 | 1.3.1.2.3 | Verificar cobertura de requerimientos | 2h | 2011-08-01 | 2011-08-02 |  | 0.75d |  |  |
| 43 | 1.3.2 | **Cotizaciones solicitadas** | 7.5d | 2011-08-02 | 2011-08-12 | 39 | 1d | 0d | 8h |
| 44 | 1.3.2.1 | **Pedido de cotización confeccionado** | 4.5d | 2011-08-02 | 2011-08-09 |  | 1d | 0d | 8h |
| 45 | 1.3.2.1.1 | Confeccionar pedido de cotización de hardware | 24h | 2011-08-02 | 2011-08-05 |  | 2.5d |  | 8h |
| 46 | 1.3.2.1.2 | Confeccionar pedido de cotización de software | 24h | 2011-08-02 | 2011-08-05 |  | 2.5d |  |  |
| 47 | 1.3.2.1.3 | Confeccionar pedido de cotización de insumos | 36h | 2011-08-02 | 2011-08-09 |  | 1d |  |  |
| 48 | 1.3.2.1.4 | Confeccionar pedido de cotización de mobiliario | 2h | 2011-08-02 | 2011-08-03 |  | 5.25d |  |  |

| ID | WBS | Task | Duration | Start | Finish | Predecessors | Total slack | Free slack |
| --- | --- | --- | --- | --- | --- | --- | --- | --- |
| 49 | 1.3.2.2 | **Pedido de cotizaciones enviadas** | 3d | 2011-08-09 | 2011-08-12 | 44 | 1d |  |
| 50 | 1.3.2.2.1 | Seleccionar proveedores propuestos | 24h | 2011-08-09 | 2011-08-12 |  | 1d |  |
| 51 | 1.3.2.2.2 | Enviar pedido de cotización de hardware | 6h | 2011-08-09 | 2011-08-10 |  | 3.25d |  |
| 52 | 1.3.2.2.3 | Enviar pedido de cotización de software | 6h | 2011-08-09 | 2011-08-10 |  | 3.25d |  |
| 53 | 1.3.2.2.4 | Enviar pedido de cotización de insumos | 2h | 2011-08-09 | 2011-08-09 |  | 3.75d |  |
| 54 | 1.3.2.2.5 | Enviar pedido de cotización de mobiliario | 2h | 2011-08-09 | 2011-08-09 |  | 3.75d |  |
| 55 | 1.3.3 | **Pedidos realizados** | 5d | 2011-08-12 | 2011-08-19 | 43 | 1d |  |
| 56 | 1.3.3.1 | **Proveedores seleccionados** | 1d | 2011-08-12 | 2011-08-15 |  | 1d | 0d |
| 57 | 1.3.3.1.1 | Realizar evaluación de costos | 8h | 2011-08-12 | 2011-08-15 |  | 1d |  |
| 58 | 1.3.3.1.2 | Analizar tiempo de entrega | 2h | 2011-08-12 | 2011-08-12 |  | 1.75d |  |
| 59 | 1.3.3.1.3 | Evaluar reputación de proveedor | 2h | 2011-08-12 | 2011-08-12 |  | 1.75d |  |
| 60 | 1.3.3.2 | **Pedidos enviados** | 4d | 2011-08-15 | 2011-08-19 | 56 | 1d |  |
| 61 | 1.3.3.2.1 | Confeccionar ordenes de compra | 8h | 2011-08-15 | 2011-08-16 |  | 1d | 0d |
| 62 | 1.3.3.2.2 | Realizar pedidos de compra a proveedores | 24h | 2011-08-16 | 2011-08-19 | 61 | 1d |  |
| 63 | 1.4 | **Plan de logística** | 390.38d | 2011-08-02 | 2013-01-30 |  | 0d |  |
| 64 | 1.4.1 | **Depósito alquilado** | 13.5d | 2011-08-02 | 2011-08-22 | 39 | 0d |  |
| 65 | 1.4.1.1 | Confeccionar requerimientos de infraestructura | 4h | 2011-08-02 | 2011-08-03 |  | 0d |  |
| 66 | 1.4.1.2 | Seleccionar depósito | 24h | 2011-08-03 | 2011-08-08 | 65 | 0d |  |
| 67 | 1.4.1.3 | Alquilar depósito | 80h | 2011-08-08 | 2011-08-22 | 66 | 0d |  |
| 68 | 1.4.1.4 | Contratar servicio de seguridad | 40h | 2011-08-08 | 2011-08-15 | 66 | 5d |  |
| 69 | 1.4.2 | **Equipamientos y materiales recibidos** | 40d | 2011-08-22 | 2011-10-17 | 62, 64 | 0d |  |
| 70 | 1.4.2.1 | Recibir equipamientos y materiales | 160h | 2011-08-22 | 2011-09-19 |  | 0d |  |
| 71 | 1.4.2.2 | Controlar equipamientos y materiales | 40h | 2011-09-19 | 2011-09-26 | 70 | 0d |  |
| 72 | 1.4.2.3 | Catalogar equipamientos y materiales | 80h | 2011-09-26 | 2011-10-10 | 71 | 0d |  |
| 73 | 1.4.2.4 | Almacenar equipamientos y materiales | 40h | 2011-10-10 | 2011-10-17 | 72 | 0d |  |

| ID | WBS | Task | Duration | Start | Finish | Predecessors | Total slack | Free slack |
| --- | --- | --- | --- | --- | --- | --- | --- | --- |
| 74 | 1.4.3 | **Embalaje realizado** | 23d | 2012-07-27 | 2012-08-29 | 69, 89 | 0d |  |
| 75 | 1.4.3.1 | Seleccionar equipos | 40h | 2012-07-27 | 2012-08-03 |  | 0d |  |
| 76 | 1.4.3.2 | Asignar centro educativo | 24h | 2012-08-03 | 2012-08-08 | 75 | 0d |  |
| 77 | 1.4.3.3 | Embalar equipamiento | 80h | 2012-08-08 | 2012-08-22 | 76 | 0d |  |
| 78 | 1.4.3.4 | Controlar equipamiento | 40h | 2012-08-22 | 2012-08-29 | 77 | 0d |  |
| 79 | 1.4.4 | **Equipamientos y materiales entregados** | 110d | 2012-08-29 | 2013-01-30 | 74 | 0d |  |
| 80 | 1.4.4.1 | Seleccionar servicio de transporte | 40h | 2012-08-29 | 2012-09-05 |  | 0d |  |
| 81 | 1.4.4.2 | **Hoja de ruta definida** | 10d | 2012-09-05 | 2012-09-19 | 80 | 0d |  |
| 82 | 1.4.4.2.1 | Confeccionar hoja de ruta | 40h | 2012-09-05 | 2012-09-12 |  | 0d |  |
| 83 | 1.4.4.2.2 | Gestionar hoja de ruta | 40h | 2012-09-12 | 2012-09-19 | 82 | 0d |  |
| 84 | 1.4.4.3 | Cargar equipamiento y materiales | 120h | 2012-09-19 | 2012-10-10 | 81 | 0d |  |
| 85 | 1.4.4.4 | Transportar equipamientos y materiales | 400h | 2012-10-10 | 2012-12-19 | 84 | 0d |  |
| 86 | 1.4.4.5 | Descargar equipamientos y materiales | 200h | 2012-12-19 | 2013-01-23 | 85 | 0d |  |
| 87 | 1.4.4.6 | Controlar equipamientos y materiales | 40h | 2013-01-23 | 2013-01-30 | 86 | 0d |  |
| 88 | 1.5 | **Centros de capacitación instalados** | 1016.88d | 2011-08-22 | 2015-07-15 |  | 0d |  |
| 89 | 1.5.1 | **Equipos informáticos configurados** | 243.88d | 2011-08-22 | 2012-07-27 | 64 | 0d |  |
| 90 | 1.5.1.1 | Montar infraestructura del laboratorio | 5h | 2011-08-22 | 2011-08-22 |  | 39.38d |  |
| 91 | 1.5.1.2 | **Servidores configurados** | 23.62d | 2011-10-17 | 2011-11-17 | 69, 90 | 180.25d |  |
| 92 | 1.5.1.2.1 | Preparar paquete de software | 1h | 2011-10-17 | 2011-10-17 |  | 180.25d | 0d |
| 93 | 1.5.1.2.2 | Instalar paquete de software | 16h | 2011-10-17 | 2011-10-19 | 92 | 180.25d | 0d |
| 94 | 1.5.1.2.3 | Testear servidor | 16h | 2011-10-19 | 2011-10-21 | 93 | 180.25d | 0d |
| 95 | 1.5.1.2.4 | Clonar servidores | 156h | 2011-10-21 | 2011-11-17 | 94 | 180.25d |  |
| 96 | 1.5.1.3 | **PC's configuradas** | 203.88d | 2011-10-17 | 2012-07-27 | 69, 90 | 0d |  |
| 97 | 1.5.1.3.1 | Preparar paquete de software | 1h | 2011-10-17 | 2011-10-17 |  | 0d |  |
| 98 | 1.5.1.3.2 | Instalar paquete de software | 16h | 2011-10-17 | 2011-10-19 | 97 | 0d |  |
| 99 | 1.5.1.3.3 | Testear PC | 16h | 2011-10-19 | 2011-10-21 | 98 | 0d |  |
| 100 | 1.5.1.3.4 | Clonar PC's | 1598h | 2011-10-21 | 2012-07-27 | 99 | 0d |  |

| ID | WBS | Task | Duration | Start | Finish | Predecessors | Total slack | Free slack |
| --- | --- | --- | --- | --- | --- | --- | --- | --- |
| 101 | 1.5.2 | **Infraestructura instalada** | 640d | 2013-01-30 | 2015-07-15 | 79 | 0d |  |
| 102 | 1.5.2.1 | Montar mobiliario | 4800h | 2013-01-30 | 2015-05-20 |  | 0d |  |
| 103 | 1.5.2.2 | Realizar instalación eléctrica | 960h | 2013-01-30 | 2013-07-17 |  | 480d |  |
| 104 | 1.5.2.3 | Realizar cableado estructurado | 4800h | 2013-01-30 | 2015-05-20 |  | 0d |  |
| 105 | 1.5.2.4 | Instalación y configuración de acceso a internet | 320h | 2015-05-20 | 2015-07-15 | 102, 103, 104 | 0d |  |
| 106 | 1.5.2.5 | Configuración de equipos informáticos en red de datos | 320h | 2015-05-20 | 2015-07-15 | 102, 103, 104 | 0d |  |
| 107 | 1.6 | **Docentes capacitados** | 1154.25d | 2011-07-14 | 2015-12-16 |  | 0d |  |
| 108 | 1.6.1 | **Capacitadores seleccionados** | 21d | 2011-07-14 | 2011-08-11 | 10 | 1007.25d | 0d |
| 109 | 1.6.1.1 | Confeccionar método de selección | 8h | 2011-07-14 | 2011-07-14 |  | 1007.25d | 0d |
| 110 | 1.6.1.2 | Comunicar a instituciones educativas | 80h | 2011-07-15 | 2011-07-28 | 109 | 1007.25d | 0d |
| 111 | 1.6.1.3 | Evaluar capacitadores | 80h | 2011-07-29 | 2011-08-11 | 110 | 1007.25d |  |
| 112 | 1.6.2 | **Programa de contenidos** | 16d | 2011-08-12 | 2011-09-02 | 108 | 1007.25d | 0d |
| 113 | 1.6.2.1 | Definir objetivos específicos | 8h | 2011-08-12 | 2011-08-12 |  | 1007.25d | 0d |
| 114 | 1.6.2.2 | Confeccionar temario | 8h | 2011-08-15 | 2011-08-15 | 113 | 1007.25d | 0d |
| 115 | 1.6.2.3 | Confeccionar actividades | 16h | 2011-08-16 | 2011-08-17 | 114 | 1007.25d | 0d |
| 116 | 1.6.2.4 | Establecer duración y método de capacitación | 8h | 2011-08-18 | 2011-08-18 | 115 | 1007.25d | 0d |
| 117 | 1.6.2.5 | Definir material de estudio | 8h | 2011-08-19 | 2011-08-19 | 116 | 1007.25d | 0d |
| 118 | 1.6.2.6 | Gestionar material de estudio | 80h | 2011-08-22 | 2011-09-02 | 117 | 1007.25d |  |
| 119 | 1.6.3 | **Docentes seleccionados** | 21d | 2011-07-29 | 2011-08-29 | 13 | 1011.38d | 4.12d |
| 120 | 1.6.3.1 | Confeccionar perfil del docente | 8h | 2011-07-29 | 2011-08-01 |  | 1011.38d | 0d |
| 121 | 1.6.3.2 | Comunicar perfil a escuelas | 80h | 2011-08-01 | 2011-08-15 | 120 | 1011.38d | 0d |
| 122 | 1.6.3.3 | Evaluar docentes | 80h | 2011-08-15 | 2011-08-29 | 121 | 1011.38d |  |
| 123 | 1.6.4 | **Capacitación docente** | 1117.25d | 2011-09-05 | 2015-12-16 | 112, 119 | 0d |  |
| 124 | 1.6.4.1 | **Capacitación centralizada** | 25d | 2011-09-05 | 2011-10-07 |  | 1092.25d |  |
| 125 | 1.6.4.1.1 | Construir cronograma de llegada y estadía de docentes | 40h | 2011-09-05 | 2011-09-09 |  | 1092.25d | 0d |
| 126 | 1.6.4.1.2 | Preparar alojamiento de los docentes | 80h | 2011-09-12 | 2011-09-23 | 125 | 1092.25d | 0d |
| 127 | 1.6.4.1.3 | Coordinar llegada de docentes | 32h | 2011-09-26 | 2011-09-29 | 126 | 1092.25d | 0d |
| 128 | 1.6.4.1.4 | Dictar capacitación | 40h | 2011-09-30 | 2011-10-06 | 127 | 1092.25d | 0d |
| 129 | 1.6.4.1.5 | Plantear plan de acción a implementar | 8h | 2011-10-07 | 2011-10-07 | 128 | 1092.25d |  |

| ID | WBS | Task | Duration | Start | Finish | Predecessors | Total slack |
| --- | --- | --- | --- | --- | --- | --- | --- |
| 130 | 1.6.4.2 | **Capacitación itinerante** | 1117.25d | 2011-09-05 | 2015-12-16 |  | 0d |
| 131 | 1.6.4.2.1 | Coordinar cronograma de visitas | 240h | 2011-09-05 | 2011-10-14 | 13 | 1087.25d |
| 132 | 1.6.4.2.2 | Gestionar visita de los capacitadores | 240h | 2015-07-15 | 2015-08-26 | 88 | 0d |
| 133 | 1.6.4.2.3 | Dictar capacitación | 320h | 2015-08-26 | 2015-10-21 | 132 | 0d |
| 134 | 1.6.4.2.4 | Presentar plan de acción | 320h | 2015-10-21 | 2015-12-16 | 133 | 0d |
